# 1200V,140mΩ

Schedule from a web Gantt chart, 2024-07-16 to 2026-03-23.
Every day is a working day

## Schedule

| ID | WBS | Task | Duration | Start | Finish | Predecessors | Complete | Status |
| --- | --- | --- | --- | --- | --- | --- | --- | --- |
| 2 | 1 | Kick off | 6d | 2024-07-16 | 2024-07-21 |  | 100% | done |
| 3 | 2 | Design & Layout | 17d | 2024-07-22 | 2024-08-07 |  | 100% | done |
| 4 | 3 | FT 调试 | 315d | 2024-10-09 | 2025-08-19 |  | 100% | done |
| 5 | 4 | **Pre-Qual** | 1d | 2024-10-29 | 2024-10-29 |  |  |  |
| 6 | 4.1 | RE168H | 1d | 2024-10-29 | 2024-10-29 |  |  |  |
| 7 | 4.2 | RE504H | 1d | 2024-10-29 | 2024-10-29 |  |  |  |
| 8 | 4.3 | RE1008H | 1d | 2024-10-29 | 2024-10-29 |  |  |  |
| 9 | 5 | RSA(基于Pre qual) | 159d | 2024-10-30 | 2025-04-06 | 6 | 28% | waiting |
| 10 | 6 | **Formal Qual** | 31d | 2025-07-25 | 2025-08-24 |  |  |  |
| 11 | 6.1 | Fab Process | 31d | 2025-07-25 | 2025-08-24 |  |  |  |
| 12 | 6.2 | F/O(CP&Map review) | 5d | 2025-07-25 | 2025-07-29 |  |  |  |
| 13 | 7 | PKG & FT | 45d | 2025-11-25 | 2026-01-08 |  |  |  |
| 14 | 8 | **RE验证** | 62d | 2026-01-16 | 2026-03-18 |  |  |  |
| 15 | 8.1 | RE168H | 12d | 2026-01-16 | 2026-01-27 |  |  | waiting |
| 16 | 8.2 | RE504H | 17d | 2026-01-28 | 2026-02-13 |  |  | waiting |
| 17 | 8.3 | RE1008H | 33d | 2026-02-14 | 2026-03-18 |  |  | waiting |
| 18 | 9 | **Datasheet** | 55d | 2026-01-28 | 2026-03-23 |  |  |  |
| 19 | 9.1 | DS V0.5 | 14d | 2026-01-28 | 2026-02-10 | 15 |  | waiting |
| 20 | 9.2 | DS V1.0 | 5d | 2026-03-19 | 2026-03-23 | 17 |  | waiting |
